Schedule from MS Project, 2015-05-11 to 2015-06-20, A marks actual dates.

## Calendars

- Standard: Mon-Fri 08:00-12:00, 13:00-17:00; Sat-Sun off.

## Resources

| Resource |
| --- |
| Tuyến |
| Nhật |
| Lâm |

## Schedule

| ID | WBS | Task | Duration | Start | Finish | Predecessors | Complete | Remaining | Total slack | Free slack | Constraint | Resources | Work | Actual work |
| --- | --- | --- | --- | --- | --- | --- | --- | --- | --- | --- | --- | --- | --- | --- |
| 1 | 1 | **Quản lý thị trường** | 30d | 2015-05-11 A | 2015-06-20 |  | 26% | 22.34d | 0d |  |  |  | 784h | 227.2h |
| 2 | 1.1 | **Danh mục** | 5d | 2015-05-11 A | 2015-05-16 |  | 56% | 2.2d | 25d |  |  |  | 184h | 103.2h |
| 3 | 1.1.1 | Tỉnh thành (danh sách, thêm, xóa, sửa) | 3d | 2015-05-11 A | 2015-05-13 |  | 80% | 0.6d | 27d |  | finish no earlier than 2015-05-13 | Nhật | 24h | 19.2h |
| 4 | 1.1.2 | Quận huyện (danh sách, thêm, xóa, sửa) | 3d | 2015-05-11 A | 2015-05-13 |  | 80% | 0.6d | 27d |  | finish no earlier than 2015-05-13 | Nhật | 24h | 19.2h |
| 5 | 1.1.3 | Xã Phường (danh sách, thêm, xóa, sửa) | 3d | 2015-05-11 A | 2015-05-13 |  | 80% | 0.6d | 1.2d | 0d | finish no earlier than 2015-05-13 | Nhật | 24h | 19.2h |
| 6 | 1.1.4 | Phòng ban (danh sách, thêm, xóa, sửa) | 2d | 2015-05-14 A | 2015-05-16 | 5 | 60% | 0.8d | 25d |  | finish no earlier than 2015-05-16 | Nhật | 16h | 9.6h |
| 7 | 1.1.5 | Hành vi vi phạm (danh sách, thêm, xóa, sửa) | 3d | 2015-05-11 A | 2015-05-13 |  | 70% | 0.9d | 27d |  | finish no earlier than 2015-05-13 | Tuyến | 24h | 16.8h |
| 8 | 1.1.6 | Hình thức xử lý (danh sách, thêm, xóa, sửa) | 3d | 2015-05-11 | 2015-05-13 |  |  |  | 27d |  | finish no earlier than 2015-05-13 | Tuyến | 24h |  |
| 9 | 1.1.7 | Đơn vị tính (danh sách, thêm, xóa, sửa) | 3d | 2015-05-11 A | 2015-05-13 |  | 80% | 0.6d | 27d |  | finish no earlier than 2015-05-13 | Tuyến | 24h | 19.2h |
| 10 | 1.1.8 | Hàng hóa (danh sách, thêm, xóa, sửa) | 3d | 2015-05-11 | 2015-05-13 |  |  |  | 27d |  | finish no earlier than 2015-05-13 | Tuyến | 24h |  |
| 11 | 1.2 | **Quản lý kinh doanh** | 6d | 2015-05-18 A | 2015-05-25 |  | 52% | 2.9d | 19d |  |  |  | 184h | 95.2h |
| 12 | 1.2.1 | **Thông tin Doanh nghiệp** | 5d | 2015-05-18 A | 2015-05-23 |  | 53% | 2.38d | 20d |  |  |  | 160h | 84h |
| 13 | 1.2.1.1 | Doanh nghiệp (danh sách, thêm, xóa, sửa) | 5d | 2015-05-18 A | 2015-05-23 |  | 50% | 2.5d | 20d |  | finish no earlier than 2015-05-23 | Nhật | 40h | 20h |
| 14 | 1.2.1.2 | Hộ kinh doanh (danh sách, thêm, xóa, sửa) | 5d | 2015-05-18 A | 2015-05-23 |  | 50% | 2.5d | 20d |  | finish no earlier than 2015-05-23 | Nhật | 40h | 20h |
| 15 | 1.2.1.3 | Doanh nghiệp ngoài địa bàn (danh sách, thêm, xóa, sửa) | 5d | 2015-05-18 A | 2015-05-23 |  | 50% | 2.5d | 20d |  | finish no earlier than 2015-05-23 | Nhật | 40h | 20h |
| 16 | 1.2.1.4 | Nhấn vào từng dòng trên lưới thì show ra thông tin chi tiết của doanh nghiệp đó, show thông tin vi phạm của doanh nghiệp | 5d | 2015-05-18 A | 2015-05-23 |  | 60% | 2d | 20d |  | finish no earlier than 2015-05-23 | Nhật | 40h | 24h |
| 17 | 1.2.2 | Loại hình kinh doanh (danh sách, thêm, xóa, sửa) | 1d | 2015-05-23 A | 2015-05-25 |  |  | 1d | 19d |  |  | Nhật | 8h |  |
| 18 | 1.2.3 | Mặt hàng hạn chế kinh doanh (danh sách, thêm, xóa, sửa) | 1d | 2015-05-23 A | 2015-05-25 |  | 70% | 0.3d | 19d |  |  | Nhật | 8h | 5.6h |
| 19 | 1.2.4 | Mặt hàng KD có điều kiện (danh sách, thêm, xóa, sửa) | 1d | 2015-05-23 A | 2015-05-25 |  | 70% | 0.3d | 19d |  |  | Nhật | 8h | 5.6h |
| 20 | 1.3 | **Hồ sơ ấn chỉ** | 19d | 2015-05-18 A | 2015-06-11 |  | 9% | 17.29d | 6d |  |  |  | 416h | 28.8h |
| 21 | 1.3.1 | **Xử phạt vi phạm** | 6d | 2015-06-04 | 2015-06-11 |  |  |  | 6d |  |  |  | 192h |  |
| 22 | 1.3.1.1 | Chia ra tab xử phạt doanh nghiệp, xử phạt hộ kinh doanh, xử phạt DN ngoài địa bàn | 6d | 2015-06-04 | 2015-06-11 |  |  |  | 6d |  | finish no earlier than 2015-06-11 | Tuyến; Nhật | 96h |  |
| 23 | 1.3.1.2 | Thể hiện danh sách, thêm, xóa, sửa | 6d | 2015-06-04 | 2015-06-11 |  |  |  | 6d |  | finish no earlier than 2015-06-11 | Tuyến; Nhật | 96h |  |
| 24 | 1.3.2 | **Quản lý hồ sơ ấn chỉ** | 8d | 2015-05-27 | 2015-06-06 |  |  |  | 10d |  |  |  | 128h |  |
| 25 | 1.3.2.1 | Thể hiện danh sách ấn chỉ đã xử phạt trong tháng của từng đội | 8d | 2015-05-27 | 2015-06-06 |  |  |  | 10d |  | finish no earlier than 2015-06-06 | Nhật | 64h |  |
| 26 | 1.3.2.2 | Nhấn vào chi tiết thì thể hiện ra danh sách xử phạt trong tháng đó | 8d | 2015-05-27 | 2015-06-06 |  |  |  | 10d |  | finish no earlier than 2015-06-06 | Nhật | 64h |  |

| ID | WBS | Task | Duration | Start | Finish | Predecessors | Complete | Remaining | Total slack | Free slack | Constraint | Resources | Work | Actual work |
| --- | --- | --- | --- | --- | --- | --- | --- | --- | --- | --- | --- | --- | --- | --- |
| 27 | 1.3.3 | **Cấp phát ấn chỉ** | 4d | 2015-05-22 A | 2015-05-27 |  | 18% | 3.3d | 17d |  |  |  | 64h | 11.2h |
| 28 | 1.3.3.1 | Danh sách, thêm, xóa, sửa | 2d | 2015-05-22 A | 2015-05-25 |  | 40% | 1.2d | 19d |  |  | Tuyến | 16h | 6.4h |
| 29 | 1.3.3.2 | Thu hồi ấn chỉ | 3d | 2015-05-25 A | 2015-05-27 |  | 10% | 2.7d | 17d |  |  | Tuyến | 24h | 2.4h |
| 30 | 1.3.3.3 | Danh sách thu hồi ấn chỉ | 3d | 2015-05-25 A | 2015-05-27 |  | 10% | 2.7d | 17d |  |  | Tuyến | 24h | 2.4h |
| 31 | 1.3.4 | Tạo serial ấn chỉ (danh sách, thêm, xóa, sửa) | 2d | 2015-05-20 A | 2015-05-21 |  | 40% | 1.2d | 21d |  |  | Tuyến | 16h | 6.4h |
| 32 | 1.3.5 | Tên ấn chỉ (danh sách, thêm, xóa, sửa) | 2d | 2015-05-18 A | 2015-05-19 |  | 70% | 0.6d | 23d |  |  | Tuyến | 16h | 11.2h |
| 33 | 1.4 | **Báo cáo thống kê** | 5d | 2015-06-15 | 2015-06-20 |  |  |  | 0d |  |  |  |  |  |
| 34 | 1.4.1 | Doanh nghiệp | 5d | 2015-06-15 | 2015-06-20 |  |  |  | 0d |  | finish no earlier than 2015-06-20 |  |  |  |
| 35 | 1.4.2 | Hộ kinh doanh | 5d | 2015-06-15 | 2015-06-20 |  |  |  | 0d |  | finish no earlier than 2015-06-20 |  |  |  |
| 36 | 1.5 | **Tài khoản** | 4d | 2015-05-25 A | 2015-05-28 |  | 24% | 3.04d | 16d |  |  |  |  |  |
| 37 | 1.5.1 | Danh sách người dùng (danh sách, thêm, xóa, sửa) | 2d | 2015-05-25 A | 2015-05-26 |  | 60% | 0.8d | 18d |  | start no earlier than 2015-05-25 |  |  |  |
| 38 | 1.5.2 | Phân quyền người dùng (nếu user có username và password mới dc phan quyền) cho chọn 3 nhóm quyền chình: admin, default, leader | 1d | 2015-05-28 | 2015-05-28 | 39 |  |  | 16d |  |  |  |  |  |
| 39 | 1.5.3 | Chỉnh sửa thông tin cá nhân của user login | 1d | 2015-05-27 | 2015-05-27 |  |  |  | 16d | 0d |  |  |  |  |
| 40 | 1.5.4 | Đổi mật khẩu của user login | 1d | 2015-05-27 | 2015-05-27 |  |  |  | 17d |  |  |  |  |  |
| 41 | 1.6 | **Thông báo** | 5d | 2015-06-15 | 2015-06-20 |  |  |  | 0d |  |  |  |  |  |
| 42 | 1.6.1 | Thêm lịch kiểm tra định kỳ cho từng đội | 5d | 2015-06-15 | 2015-06-20 |  |  |  | 0d |  | finish no earlier than 2015-06-20 |  |  |  |
| 43 | 1.6.2 | Thông báo nếu có có lịch kiểm tra trong ngày, có thông báo của user khác | 5d | 2015-06-15 | 2015-06-20 |  |  |  | 0d |  | finish no earlier than 2015-06-20 |  |  |  |
| 44 | 1.7 | **Hỏi đáp** | 5d | 2015-06-15 | 2015-06-20 |  |  |  | 0d |  |  |  |  |  |
| 45 | 1.7.1 | Gửi đến user hoặc phòng ban cần hỏi đáp, thông báo | 5d | 2015-06-15 | 2015-06-20 |  |  |  | 0d |  | finish no earlier than 2015-06-20 |  |  |  |
